# Gantt

How a schedule from MS Project changed from version to version. A marks actual dates.

## Version 1 (saved 2018-04-11)

Note of the change: Gantt PDF for @Borja Calderón

| ID | WBS | Task | Duration | Start | Finish | Predecessors | Total float | Constraint |
| --- | --- | --- | --- | --- | --- | --- | --- | --- |
| 1 |  | Kick-Off meeting | 0d | 2018-09-10 | 2018-09-10 |  | 0d | start no earlier than 2018-09-10 |
| 2 | 2 | **Project Management** | 880d | 2018-09-10 | 2022-01-21 |  | 0d |  |
| 3 |  | Project management plan | 0d | 2018-10-05 | 2018-10-05 | 1FS+1mo, 4FF, 21FF | 0d | finish no later than 2018-10-05 |
| 4 |  | Development of the project management plan | 20d | 2018-09-10 | 2018-10-05 | 1SS | 0d |  |
| 5 | 2.3 | **Monitoring of the Project** | 880d | 2018-09-10 | 2022-01-21 |  | 0d |  |
| 6 |  | Meetings | 880d | 2018-09-10 | 2022-01-21 | 1SS | 0d |  |
| 7 |  | Task tracking and scheduling | 880d | 2018-09-10 | 2022-01-21 | 1SS | 0d |  |
| 8 |  | Annual Reporting | 880d | 2018-09-10 | 2022-01-21 | 1SS | 0d |  |
| 9 |  | Project Implementation of risk management | 880d | 2018-09-10 | 2022-01-21 | 1SS | 0d |  |
| 10 | 3 | **Quality and Administration** | 880d | 2018-09-10 | 2022-01-21 |  | 0d |  |
| 11 | 3.1 | **Human resources** | 860d | 2018-10-08 | 2022-01-21 |  | 0d |  |
| 12 |  | Employment of the necessary staff | 30d | 2018-10-08 | 2018-11-16 | 3 | 0d |  |
| 13 |  | Human resources management | 830d | 2018-11-19 | 2022-01-21 | 12 | 0d |  |
| 14 | 3.2 | **Financial Plan** | 20d | 2018-09-10 | 2018-10-05 |  | 0d |  |
| 15 | 3.2.1 | **Costs** | 4d | 2018-09-10 | 2018-09-13 |  | 0d |  |
| 16 |  | Fix | 2d | 2018-09-10 | 2018-09-11 | 1SS | 0d |  |
| 17 |  | Variable | 2d | 2018-09-12 | 2018-09-13 | 16 | 0d |  |
| 18 |  | Funding | 3d | 2018-09-14 | 2018-09-18 | 17 | 0d |  |
| 19 |  | Economic feasibility | 5d | 2018-09-19 | 2018-09-25 | 18 | 0d |  |
| 20 |  | Evolution monitoring | 5d | 2018-09-26 | 2018-10-02 | 19 | 0d |  |
| 21 |  | Additional and follow-up funding seek | 3d | 2018-10-03 | 2018-10-05 | 20 | 0d |  |
| 22 | 3.3 | **Documentation Management** | 880d | 2018-09-10 | 2022-01-21 |  | 0d |  |
| 23 |  | Guidelines preparation | 880d | 2018-09-10 | 2022-01-21 | 1SS | 0d |  |
| 24 |  | Document revision | 880d | 2018-09-10 | 2022-01-21 | 1SS | 0d |  |
| 25 |  | Document rectification | 880d | 2018-09-10 | 2022-01-21 | 1SS | 0d |  |
| 26 |  | Document approval | 880d | 2018-09-10 | 2022-01-21 | 1SS | 0d |  |
| 27 |  | Periodic Monitoring | 880d | 2018-09-10 | 2022-01-21 | 1SS | 0d |  |
| 28 | 4 | **State of the Art** | 60d | 2018-10-08 | 2018-12-28 |  | 0d |  |
| 29 |  | State of the Art report | 0d | 2018-12-28 | 2018-12-28 | 1FS+4mo, 32FF, 35FF, 41FF | 0d | finish no later than 2018-12-28 |
| 30 | 4.2 | **Payloads** | 60d | 2018-10-08 | 2018-12-28 |  | 0d |  |
| 31 |  | Search for current space applications | 35d | 2018-10-08 | 2018-11-23 | 3 | 0d |  |
| 32 |  | Requirements definition | 25d | 2018-11-26 | 2018-12-28 | 31 | 0d |  |
| 33 | 4.3 | **Modular System** | 60d | 2018-10-08 | 2018-12-28 |  | 0d |  |
| 34 |  | Search for current modular systems with space applications | 30d | 2018-10-08 | 2018-11-16 | 3 | 0d |  |
| 35 |  | Requirements definition | 30d | 2018-11-19 | 2018-12-28 | 34 | 0d |  |
| 36 | 4.4 | **Urban Development Applications with Space Technologies** | 60d | 2018-10-08 | 2018-12-28 |  | 0d |  |
| 37 | 4.4.1 | **Search for current space applications** | 20d | 2018-10-08 | 2018-11-02 |  | 0d |  |
| 38 |  | Weather forecast | 20d | 2018-10-08 | 2018-11-02 | 3 | 0d |  |
| 39 |  | Urban planning (3D models) | 20d | 2018-10-08 | 2018-11-02 | 3 | 0d |  |
| 40 |  | Greenhouse emissions reductions (pollution) | 20d | 2018-10-08 | 2018-11-02 | 3 | 0d |  |
| 41 |  | Requirements definition | 40d | 2018-11-05 | 2018-12-28 | 37 | 0d |  |
| 42 | 5 | **Product development** | 500d | 2018-12-31 | 2020-11-27 |  | 0d |  |
| 43 | 5.1 | **Preliminary design** | 240d | 2018-12-31 | 2019-11-29 |  | 0d |  |
| 44 | 5.1.1 | **Payloads** | 120d | 2018-12-31 | 2019-06-14 |  | 0d |  |
| 45 |  | Payload preliminary report | 0d | 2019-06-14 | 2019-06-14 | 1FS+10mo, 47FF | 0d | finish no later than 2019-06-14 |
| 46 |  | Research | 70d | 2018-12-31 | 2019-04-05 | 29 | 0d |  |
| 47 |  | Development | 50d | 2019-04-08 | 2019-06-14 | 46 | 0d |  |
| 48 | 5.1.2 | **Modular system** | 60d | 2019-06-17 | 2019-09-06 |  | 0d |  |
| 49 |  | Modular system preliminary design | 0d | 2019-09-06 | 2019-09-06 | 1FS+13mo, 53FF, 50FF | 0d | finish no later than 2019-09-06 |
| 50 |  | Development of physical framework for sensor blocks | 30d | 2019-06-17 | 2019-07-26 | 45 | 30d |  |
| 51 |  | Development of systems interaction and applications | 30d | 2019-06-17 | 2019-07-26 | 45 | 0d |  |
| 52 |  | Development of sensors data fusion software | 20d | 2019-07-29 | 2019-08-23 | 51 | 0d |  |
| 53 |  | Definition of SATCOM applications domains | 10d | 2019-08-26 | 2019-09-06 | 52 | 0d |  |
| 54 | 5.1.3 | **Interaction platform** | 60d | 2019-09-09 | 2019-11-29 |  | 0d |  |
| 55 |  | Interaction platform preliminary design | 0d | 2019-11-29 | 2019-11-29 | 1FS+16mo, 58FF | 0d | finish no later than 2019-11-29 |
| 56 |  | Implement web-based servers for sharing sensors data | 20d | 2019-09-09 | 2019-10-04 | 49 | 20d |  |
| 57 |  | Implement processing algorithms based on applications | 40d | 2019-09-09 | 2019-11-01 | 49 | 0d |  |
| 58 |  | Pre-design a full services stakeholders platform | 20d | 2019-11-04 | 2019-11-29 | 56, 57 | 0d |  |
| 59 | 5.2 | **Final Design** | 380d | 2019-06-17 | 2020-11-27 |  | 0d |  |
| 60 |  | Mid-term project report | 0d | 2020-05-15 | 2020-05-15 | 1FS+22mo | 0d | finish no later than 2020-05-15 |
| 61 | 5.2.2 | **Payloads** | 260d | 2019-06-17 | 2020-06-12 |  | 0d |  |
| 62 |  | Payload final design | 0d | 2020-06-12 | 2020-06-12 | 1FS+23mo, 64FF | 0d | finish no later than 2020-06-12 |
| 63 |  | Sensors final design | 200d | 2019-06-17 | 2020-03-20 | 45 | 0d |  |
| 64 |  | Sensors final technical specifications | 60d | 2020-03-23 | 2020-06-12 | 63 | 0d |  |
| 65 | 5.2.3 | **Modular System** | 260d | 2019-09-09 | 2020-09-04 |  | 0d |  |
| 66 |  | Modular system final design - milestone | 0d | 2020-09-04 | 2020-09-04 | 1FS+26mo, 69FF | 0d | finish no later than 2020-09-04 |
| 67 |  | Modular system final design | 200d | 2019-09-09 | 2020-06-12 | 49 | 0d |  |
| 68 |  | Sensors data fusion software final design | 200d | 2019-09-09 | 2020-06-12 | 49 | 0d |  |
| 69 |  | Modular system's final technical specifications | 60d | 2020-06-15 | 2020-09-04 | 67, 68 | 0d |  |
| 70 | 5.2.4 | **Interaction Platform** | 260d | 2019-12-02 | 2020-11-27 |  | 0d |  |

| ID | WBS | Task | Duration | Start | Finish | Predecessors | Total float | Constraint |
| --- | --- | --- | --- | --- | --- | --- | --- | --- |
| 71 |  | Interaction platform final design | 0d | 2020-11-27 | 2020-11-27 | 1FS+29mo, 75FF, 73FF | 0d | finish no later than 2020-11-27 |
| 72 |  | Web based servers for data sharing final implementation | 100d | 2019-12-02 | 2020-04-17 | 55 | 1d |  |
| 73 |  | Processing algorithms based on applications final design | 180d | 2019-12-02 | 2020-08-07 | 55 | 80d |  |
| 74 |  | Full services stakeholders platform implementation | 135d | 2020-04-20 | 2020-10-23 | 72 | 1d |  |
| 75 |  | Final technical specifications | 24d | 2020-10-26 | 2020-11-26 | 74 | 1d |  |
| 76 | 6 | **Simulation, testing, validation and quality** | 420d | 2020-06-15 | 2022-01-21 |  | 0d |  |
| 77 |  | Prototype manufacturing | 0d | 2021-04-16 | 2021-04-16 | 1FS+34mo, 79FF, 80FF, 81FF | 0d | finish no later than 2021-04-16 |
| 78 | 6.2 | **Technology Demonstrator Prototype Manufacturing** | 220d | 2020-06-15 | 2021-04-16 |  | 0d |  |
| 79 |  | Manufacturing of payload sensors | 100d | 2020-06-15 | 2020-10-30 | 62 | 120d |  |
| 80 |  | Manufacturing of modular system | 100d | 2020-09-07 | 2021-01-22 | 66 | 60d |  |
| 81 |  | Implementation of interaction platform | 100d | 2020-11-30 | 2021-04-16 | 71 | 0d |  |
| 82 |  | Payload Validation | 30d | 2020-11-02 | 2020-12-11 | 79 | 220d |  |
| 83 |  | Modular System Validation | 30d | 2021-01-25 | 2021-03-05 | 80 | 160d |  |
| 84 |  | Interaction Platform Validation | 30d | 2021-04-19 | 2021-05-28 | 81 | 30d |  |
| 85 |  | Individual systems testing | 0d | 2021-07-09 | 2021-07-09 | 1FS+37mo, 82FF, 83FF, 84FF | 0d | finish no later than 2021-07-09 |
| 86 |  | Full System Prototype Validation | 70d | 2021-07-12 | 2021-10-15 | 85 | 10d |  |
| 87 |  | Full system testing | 0d | 2021-10-29 | 2021-10-29 | 1FS+41mo, 86FF | 0d | finish no later than 2021-10-29 |
| 88 |  | Quality of the product | 50d | 2021-11-01 | 2022-01-07 | 87 | 10d |  |
| 89 |  | Final report | 0d | 2022-01-21 | 2022-01-21 | 1FS+44mo, 6FF, 7FF, 8FF, 9FF, 13FF, 23FF, 24FF, 25FF, 26FF, 27FF, 88FF, 102FF, 104FF, 105FF, 107FF, 108FF | 0d | finish no later than 2022-01-21 |
| 90 | 7 | **Business planning and exploitation of results** | 20d | 2018-09-10 | 2018-10-05 |  | 0d |  |
| 91 |  | Bussines plan | 0d | 2018-10-05 | 2018-10-05 | 1FS+1mo, 96FF | 0d | finish no later than 2018-10-05 |
| 92 | 7.2 | **Market Approach** | 10d | 2018-09-10 | 2018-09-21 |  | 2d |  |
| 93 |  | Study of stakeholders | 8d | 2018-09-10 | 2018-09-19 | 1 | 864d |  |
| 94 |  | Procurement conditions negotation | 5d | 2018-09-10 | 2018-09-14 | 1 | 867d |  |
| 95 |  | Resources purchase | 10d | 2018-09-10 | 2018-09-21 | 1 | 2d |  |
| 96 |  | Exploitation and Business Plans | 8d | 2018-09-24 | 2018-10-03 | 92 | 2d |  |
| 97 | 8 | **Communication and dissemination strategies** | 880d | 2018-09-10 | 2022-01-21 |  | 0d |  |
| 98 |  | Communication plan | 0d | 2018-10-05 | 2018-10-05 | 1FS+1mo, 99FF | 0d | finish no later than 2018-10-05 |
| 99 |  | Dissemination and Communication plan | 1mo | 2018-09-10 | 2018-10-05 | 1 | 0d |  |
| 100 | 8.3 | **On-line Dissemination/Communication Activities** | 860d | 2018-10-08 | 2022-01-21 |  | 0d |  |
| 101 |  | Web site development | 90d | 2018-10-08 | 2019-02-08 | 98 | 0d |  |
| 102 |  | Social media management | 770d | 2019-02-11 | 2022-01-21 | 101 | 0d |  |
| 103 | 8.4 | **Off-line Dissemination/Communication Activities** | 850d | 2018-10-08 | 2022-01-07 |  | 10d |  |
| 104 |  | Conferences | 800d | 2018-10-08 | 2021-10-29 | 3 | 60d |  |
| 105 |  | Meetings | 850d | 2018-10-08 | 2022-01-07 | 3 | 10d |  |
| 106 | 8.5 | **Production of Dissemination Materials** | 850d | 2018-10-08 | 2022-01-07 |  | 10d |  |
| 107 |  | Technology demonstrators | 850d | 2018-10-08 | 2022-01-07 | 3 | 10d |  |
| 108 |  | Audio visual material production | 500d | 2018-10-08 | 2020-09-04 | 3 | 360d |  |

## Version 2 (saved 2018-04-12)

Note of the change: GANT CERRADO

Last finish stays 2022-01-21.

Changed:

| ID | Task | Start | Finish | Duration | Total float |
| --- | --- | --- | --- | --- | --- |
| 30 | **Payloads** |  | 2018-12-28 → 2018-12-21 (-7d) | 60d → 55d | 0d → 5d |
| 31 | Search for current space applications |  | 2018-11-23 → 2018-11-16 (-7d) | 35d → 30d | 0d → 5d |
| 32 | Requirements definition | 2018-11-26 → 2018-11-19 (-7d) | 2018-12-28 → 2018-12-21 (-7d) |  | 0d → 5d |
| 33 | **Modular System** |  | 2018-12-28 → 2018-12-21 (-7d) | 60d → 55d | 0d → 5d |
| 34 | Search for current modular systems with space applications |  | 2018-11-16 → 2018-11-09 (-7d) | 30d → 25d | 0d → 5d |
| 35 | Requirements definition | 2018-11-19 → 2018-11-12 (-7d) | 2018-12-28 → 2018-12-21 (-7d) |  | 0d → 5d |
| 75 | Final technical specifications |  | 2020-11-26 → 2020-11-27 (+1d) | 24d → 25d | 1d → 0d |
| 79 | Manufacturing of payload sensors |  | 2020-10-30 → 2021-03-19 (+140d) | 100d → 200d | 120d → 20d |
| 80 | Manufacturing of modular system |  | 2021-01-22 → 2021-04-02 (+70d) | 100d → 150d | 60d → 10d |
| 82 | Payload Validation | 2020-11-02 → 2021-03-22 (+140d) | 2020-12-11 → 2021-06-11 (+182d) | 30d → 60d | 220d → 20d |
| 83 | Modular System Validation | 2021-01-25 → 2021-04-05 (+70d) | 2021-03-05 → 2021-06-25 (+112d) | 30d → 60d | 160d → 10d |
| 84 | Interaction Platform Validation |  | 2021-05-28 → 2021-06-18 (+21d) | 30d → 45d | 30d → 15d |
| 86 | Full System Prototype Validation |  | 2021-10-15 → 2021-10-29 (+14d) | 70d → 80d | 10d → 0d |
| 88 | Quality of the product |  | 2022-01-07 → 2022-01-21 (+14d) | 50d → 60d | 10d → 0d |
| 103 | **Off-line Dissemination/Communication Activities** |  | 2022-01-07 → 2022-01-21 (+14d) | 850d → 860d | 10d → 0d |
| 104 | Conferences |  | 2021-10-29 → 2022-01-21 (+84d) | 800d → 860d | 60d → 0d |
| 105 | Meetings |  | 2022-01-07 → 2022-01-21 (+14d) | 850d → 860d | 10d → 0d |
| 106 | **Production of Dissemination Materials** |  | 2022-01-07 → 2022-01-21 (+14d) | 850d → 860d | 10d → 0d |
| 107 | Technology demonstrators |  | 2022-01-07 → 2022-01-21 (+14d) | 850d → 860d | 10d → 0d |
| 108 | Audio visual material production |  | 2020-09-04 → 2022-01-21 (+504d) | 500d → 860d | 360d → 0d |
