# Gantt

How a schedule from MS Project changed from version to version. A marks actual dates.

## Version 1 (saved 2018-04-03)

Note of the change: Activity resources:HR

| ID | WBS | Task | Duration | Start | Finish | Total float |
| --- | --- | --- | --- | --- | --- | --- |
| 1 | 1 | **Project Management** | 1d | 2018-04-03 | 2018-04-03 | 0d |
| 2 |  | Development of the project management plan | 1d | 2018-04-03 | 2018-04-03 |  |
| 3 | 1.2 | **Monitoring of the Project** | 1d | 2018-04-03 | 2018-04-03 | 0d |
| 4 |  | Meetings | 1d | 2018-04-03 | 2018-04-03 |  |
| 5 |  | Task tracking and scheduling | 1d | 2018-04-03 | 2018-04-03 |  |
| 6 |  | Annual Reporting | 1d | 2018-04-03 | 2018-04-03 |  |
| 7 |  | Project Implementation of risk management | 1d | 2018-04-03 | 2018-04-03 |  |
| 8 | 2 | **Quality and Administration** | 1d | 2018-04-03 | 2018-04-03 | 0d |
| 9 | 2.1 | **Human resources** | 1d | 2018-04-03 | 2018-04-03 | 0d |
| 10 |  | Employment of the necessary staff | 1d | 2018-04-03 | 2018-04-03 |  |
| 11 |  | Human resources management | 1d | 2018-04-03 | 2018-04-03 |  |
| 12 |  | Financial Plan | 1d | 2018-04-03 | 2018-04-03 |  |
| 13 |  | Documentation Management | 1d | 2018-04-03 | 2018-04-03 |  |
| 14 |  | Periodic Monitoring | 1d | 2018-04-03 | 2018-04-03 |  |
| 15 | 3 | **State of the Art** | 1d | 2018-04-03 | 2018-04-03 | 0d |
| 16 |  | Payloads | 1d | 2018-04-03 | 2018-04-03 |  |
| 17 |  | Modular System | 1d | 2018-04-03 | 2018-04-03 |  |
| 18 |  | Urban Development Applications | 1d | 2018-04-03 | 2018-04-03 |  |
| 19 | 4 | **Product development** | 1d | 2018-04-03 | 2018-04-03 | 0d |
| 20 | 4.1 | **Preliminary design** | 1d | 2018-04-03 | 2018-04-03 | 0d |
| 21 |  | Payload preliminary design | 1d | 2018-04-03 | 2018-04-03 |  |
| 22 |  | Modular system's preliminary design | 1d | 2018-04-03 | 2018-04-03 |  |
| 23 |  | Interaction platform's preliminary design | 1d | 2018-04-03 | 2018-04-03 |  |
| 24 | 4.2 | **Final Design** | 1d | 2018-04-03 | 2018-04-03 | 0d |
| 25 |  | Payload final design | 1d | 2018-04-03 | 2018-04-03 |  |
| 26 |  | Modular system final design | 1d | 2018-04-03 | 2018-04-03 |  |
| 27 |  | Interaction platform final design | 1d | 2018-04-03 | 2018-04-03 |  |
| 28 | 5 | **Simulation, testing, validation and quality** | 1d | 2018-04-03 | 2018-04-03 | 0d |
| 29 |  | Technology demonstrator prototype manufacturing | 1d | 2018-04-03 | 2018-04-03 |  |
| 30 |  | Payload Validation | 1d | 2018-04-03 | 2018-04-03 |  |
| 31 |  | Modular System Validation | 1d | 2018-04-03 | 2018-04-03 |  |
| 32 |  | Interaction platform validation | 1d | 2018-04-03 | 2018-04-03 |  |
| 33 |  | Full system prototype validation | 1d | 2018-04-03 | 2018-04-03 |  |
| 34 |  | Quality of the product | 1d | 2018-04-03 | 2018-04-03 |  |
| 35 | 6 | **Business planning and exploitation of results** | 1d | 2018-04-03 | 2018-04-03 | 0d |
| 36 |  | Market Approach | 1d | 2018-04-03 | 2018-04-03 |  |
| 37 |  | Exploitation and business plans | 1d | 2018-04-03 | 2018-04-03 |  |
| 38 | 7 | **Communication and dissemination strategies** | 1d | 2018-04-03 | 2018-04-03 | 0d |
| 39 |  | Dissemination and Communication plan | 1d | 2018-04-03 | 2018-04-03 |  |
| 40 |  | On-line dissemination activities | 1d | 2018-04-03 | 2018-04-03 |  |
| 41 |  | Off-line dissemination activities | 1d | 2018-04-03 | 2018-04-03 |  |
| 42 |  | Dissemination materials | 1d | 2018-04-03 | 2018-04-03 |  |

## Version 2 (saved 2018-04-05)

Note of the change: Task 3 update

Last finish 2018-04-03 → 2022-01-21 (+1389d).

Added:

| ID | Task | Duration | Start | Finish | Predecessors | Constraint |
| --- | --- | --- | --- | --- | --- | --- |
| 1 | Kick-Off meeting | 0d | 2018-09-10 | 2018-09-10 |  | start no earlier than 2018-09-10 |
| 3 | Project management plan | 0d | 2018-10-05 | 2018-10-05 | 1FS+1mo |  |
| 15 | **Costs** | 10d | 2018-09-10 | 2018-09-21 |  |  |
| 16 | Fix | 5d | 2018-09-10 | 2018-09-14 | 1 |  |
| 17 | Variable | 5d | 2018-09-17 | 2018-09-21 | 16 |  |
| 18 | Funding | 5d | 2018-09-24 | 2018-09-28 | 17 |  |
| 19 | Economic feasibility | 5d | 2018-10-01 | 2018-10-05 | 18 |  |
| 20 | Evolution monitoring | 5d | 2018-10-08 | 2018-10-12 | 19 |  |
| 21 | Additional and follow-up funding seek | 5d | 2018-10-15 | 2018-10-19 | 3FF, 20 |  |
| 23 | Guidelines preparation | 880d | 2018-09-10 | 2022-01-21 | 89FF |  |
| 24 | Document revision | 880d | 2018-09-10 | 2022-01-21 | 89FF |  |
| 25 | Document rectification | 880d | 2018-09-10 | 2022-01-21 | 89FF |  |
| 26 | Document approval | 880d | 2018-09-10 | 2022-01-21 | 89FF |  |
| 29 | State of the Art report | 0d | 2018-12-28 | 2018-12-28 | 1FS+4mo |  |
| 31 | Search for current space applications | 40d | 2018-10-08 | 2018-11-30 | 3 |  |
| 32 | Requirements definition | 20d | 2018-12-03 | 2018-12-28 | 29FF, 31 |  |
| 34 | Search for current modular systems with space applications | 30d | 2018-10-08 | 2018-11-16 | 3 |  |
| 35 | Requirements definition | 30d | 2018-11-19 | 2018-12-28 | 29FF, 34 |  |
| 37 | **Search for current space applications** | 20d | 2018-10-08 | 2018-11-02 |  |  |
| 38 | Weather forecast | 20d | 2018-10-08 | 2018-11-02 | 3 |  |
| 39 | Urban planning (3D models) | 20d | 2018-10-08 | 2018-11-02 | 3 |  |
| 40 | Greenhouse emissions reductions (pollution) | 20d | 2018-10-08 | 2018-11-02 | 3 |  |
| 41 | Requirements definition | 40d | 2018-11-05 | 2018-12-28 | 29FF, 37 |  |
| 45 | Payload preliminary report | 0d | 2019-06-14 | 2019-06-14 | 1FS+10mo |  |
| 46 | Research | 70d | 2018-12-31 | 2019-04-05 | 29 |  |
| 47 | Development | 50d | 2019-04-08 | 2019-06-14 | 46, 45FF |  |
| 49 | Modular system preliminary design | 0d | 2019-09-06 | 2019-09-06 | 1FS+13mo |  |
| 50 | Development of physical framework for sensor blocks | 30d | 2019-06-17 | 2019-07-26 | 45 |  |
| 51 | Development of systems interaction and applications | 25d | 2019-06-17 | 2019-07-19 | 45 |  |
| 52 | Development of sensors data fusion software | 20d | 2019-07-22 | 2019-08-16 | 51 |  |
| 53 | Definition of SATCOM applications domains | 5d | 2019-09-02 | 2019-09-06 | 52, 49FF |  |
| 55 | Interaction platform preliminary design | 0d | 2019-11-29 | 2019-11-29 | 1FS+16mo |  |
| 56 | Implement web-based servers for sharing sensors data | 20d | 2019-09-09 | 2019-10-04 | 49 |  |
| 57 | Implement processing algorithms based on applications | 40d | 2019-09-09 | 2019-11-01 | 49 |  |
| 58 | Pre-design a full services stakeholders platform | 20d | 2019-11-04 | 2019-11-29 | 55FF, 56, 57 |  |
| 60 | Mid-term project report | 0d | 2020-05-15 | 2020-05-15 | 1FS+22mo |  |
| 61 | **Payloads** | 260d | 2019-06-17 | 2020-06-12 |  |  |
| 63 | Sensors final design | 200d | 2019-06-17 | 2020-03-20 | 45 |  |
| 64 | Sensors final technical specifications | 60d | 2020-03-23 | 2020-06-12 | 63, 62FF |  |
| 65 | **Modular System** | 260d | 2019-09-09 | 2020-09-04 |  |  |
| 66 | Modular system final design - milestone | 0d | 2020-09-04 | 2020-09-04 | 1FS+26mo |  |
| 68 | Sensors data fusion software final design | 200d | 2019-09-09 | 2020-06-12 | 49 |  |
| 69 | Modular system's final technical specifications | 60d | 2020-06-15 | 2020-09-04 | 67, 68, 66FF |  |
| 70 | **Interaction Platform** | 260d | 2019-12-02 | 2020-11-27 |  |  |
| 72 | Web based servers for data sharing final implementation | 100d | 2019-12-02 | 2020-04-17 | 55 |  |
| 73 | Processing algorithms based on applications final design | 180d | 2019-12-02 | 2020-08-07 | 55 |  |
| 74 | Full services stakeholders platform implementation | 120d | 2020-04-20 | 2020-10-02 | 72 |  |
| 75 | Final technical specifications | 20d | 2020-11-02 | 2020-11-27 | 74, 71FF |  |
| 77 | Prototype manufacturing | 0d | 2021-04-16 | 2021-04-16 | 1FS+34mo |  |
| 79 | Manufacturing of payload sensors | 100d | 2020-06-15 | 2020-10-30 | 62 |  |
| 80 | Manufacturing of modular system | 100d | 2020-09-07 | 2021-01-22 | 66 |  |
| 81 | Implementation of interaction platform | 100d | 2020-11-30 | 2021-04-16 | 71 |  |
| 85 | Individual systems testing | 0d | 2021-07-09 | 2021-07-09 | 1FS+37mo |  |
| 87 | Full system testing | 0d | 2021-10-29 | 2021-10-29 | 1FS+41mo |  |
| 89 | Final report | 0d | 2022-01-21 | 2022-01-21 | 1FS+44mo |  |
| 91 | Bussines plan | 0d | 2018-10-05 | 2018-10-05 | 1FS+1mo |  |
| 93 | Study of stakeholders | 8d | 2018-09-10 | 2018-09-19 | 1 |  |
| 94 | Procurement conditions negotation | 5d | 2018-09-10 | 2018-09-14 | 1 |  |
| 95 | Resources purchase | 12d | 2018-09-10 | 2018-09-25 | 1 |  |
| 98 | Communication plan | 0d | 2018-10-05 | 2018-10-05 | 1FS+1mo |  |
| 101 | Web site development | 90d | 2018-10-08 | 2019-02-08 | 98 |  |
| 102 | Social media management | 770d | 2019-02-11 | 2022-01-21 | 101, 89FF |  |
| 104 | Conferences | 800d | 2018-12-31 | 2022-01-21 | 3, 89FF |  |
| 105 | Meetings | 800d | 2018-12-31 | 2022-01-21 | 3, 89FF |  |
| 107 | Technology demonstrators | 300d | 2020-11-30 | 2022-01-21 | 89FF, 3 |  |
| 108 | Audio visual material production | 500d | 2020-02-24 | 2022-01-21 | 3, 89FF |  |

Changed:

| ID | Task | Start | Finish | Duration | Total float | Predecessors | Other |
| --- | --- | --- | --- | --- | --- | --- | --- |
| 2 | **Project Management** | 2018-04-03 → 2018-09-10 (+160d) | 2018-04-03 → 2022-01-21 (+1389d) | 1d → 880d |  | none → 1 |  |
| 4 | Development of the project management plan | 2018-04-03 → 2018-09-10 (+160d) | 2018-04-03 → 2018-10-22 (+202d) | 1d → 31d | none → 849d | none → 1, 3FF |  |
| 5 | **Monitoring of the Project** | 2018-04-03 → 2018-09-10 (+160d) | 2018-04-03 → 2022-01-21 (+1389d) | 1d → 880d |  |  |  |
| 6 | Meetings | 2018-04-03 → 2018-09-10 (+160d) | 2018-04-03 → 2022-01-21 (+1389d) | 1d → 880d | none → 0d | none → 1, 89FF |  |
| 7 | Task tracking and scheduling | 2018-04-03 → 2018-09-10 (+160d) | 2018-04-03 → 2022-01-21 (+1389d) | 1d → 880d | none → 0d | none → 1, 89FF |  |
| 8 | Annual Reporting | 2018-04-03 → 2018-09-10 (+160d) | 2018-04-03 → 2022-01-21 (+1389d) | 1d → 880d | none → 0d | none → 1, 89FF |  |
| 9 | Project Implementation of risk management | 2018-04-03 → 2018-09-10 (+160d) | 2018-04-03 → 2022-01-21 (+1389d) | 1d → 880d | none → 0d | none → 1, 89FF |  |
| 10 | **Quality and Administration** | 2018-04-03 → 2018-09-10 (+160d) | 2018-04-03 → 2022-01-21 (+1389d) | 1d → 880d |  |  |  |
| 11 | **Human resources** | 2018-04-03 → 2018-10-08 (+188d) | 2018-04-03 → 2022-01-21 (+1389d) | 1d → 860d |  |  |  |
| 12 | Employment of the necessary staff | 2018-04-03 → 2018-10-08 (+188d) | 2018-04-03 → 2018-11-16 (+227d) | 1d → 30d | none → 0d | none → 3 |  |
| 13 | Human resources management | 2018-04-03 → 2018-11-19 (+230d) | 2018-04-03 → 2022-01-21 (+1389d) | 1d → 830d | none → 0d | none → 12, 89FF |  |
| 14 | **Financial Plan** | 2018-04-03 → 2018-09-10 (+160d) | 2018-04-03 → 2018-10-19 (+199d) | 1d → 30d | none → 850d |  |  |
| 22 | **Documentation Management** | 2018-04-03 → 2018-09-10 (+160d) | 2018-04-03 → 2022-01-21 (+1389d) | 1d → 880d | none → 0d | none → 1 |  |
| 27 | Periodic Monitoring | 2018-04-03 → 2018-09-10 (+160d) | 2018-04-03 → 2022-01-21 (+1389d) | 1d → 880d | none → 0d | none → 1, 89FF |  |
| 28 | **State of the Art** | 2018-04-03 → 2018-10-08 (+188d) | 2018-04-03 → 2018-12-28 (+269d) | 1d → 60d | 0d → 740d |  |  |
| 30 | **Payloads** | 2018-04-03 → 2018-10-08 (+188d) | 2018-04-03 → 2018-12-28 (+269d) | 1d → 60d | none → 800d |  |  |
| 33 | **Modular System** | 2018-04-03 → 2018-10-08 (+188d) | 2018-04-03 → 2018-12-28 (+269d) | 1d → 60d | none → 800d |  |  |
| 36 | **Urban Development Applications with Space Technologies** | 2018-04-03 → 2018-10-08 (+188d) | 2018-04-03 → 2018-12-28 (+269d) | 1d → 60d | none → 800d |  | was named Urban Development Applications |
| 42 | **Product development** | 2018-04-03 → 2018-12-31 (+272d) | 2018-04-03 → 2020-11-27 (+969d) | 1d → 500d | 0d → 300d |  |  |
| 43 | **Preliminary design** | 2018-04-03 → 2018-12-31 (+272d) | 2018-04-03 → 2019-11-29 (+605d) | 1d → 240d | 0d → 540d |  |  |
| 44 | **Payloads** | 2018-04-03 → 2018-12-31 (+272d) | 2018-04-03 → 2019-06-14 (+437d) | 1d → 120d | none → 540d |  | was named Payload preliminary design |
| 48 | **Modular system** | 2018-04-03 → 2019-06-17 (+440d) | 2018-04-03 → 2019-09-06 (+521d) | 1d → 60d | none → 420d |  | was named Modular system's preliminary design |
| 54 | **Interaction platform** | 2018-04-03 → 2019-09-09 (+524d) | 2018-04-03 → 2019-11-29 (+605d) | 1d → 60d | none → 380d |  | was named Interaction platform's preliminary design |
| 59 | **Final Design** | 2018-04-03 → 2019-06-17 (+440d) | 2018-04-03 → 2020-11-27 (+969d) | 1d → 380d | 0d → 300d |  |  |
| 62 | Payload final design | 2018-04-03 → 2020-06-12 (+801d) | 2018-04-03 → 2020-06-12 (+801d) | 1d → 0d | none → 420d | none → 1FS+23mo |  |
| 67 | Modular system final design | 2018-04-03 → 2019-09-09 (+524d) | 2018-04-03 → 2020-06-12 (+801d) | 1d → 200d | none → 360d | none → 49 |  |
| 71 | Interaction platform final design | 2018-04-03 → 2020-11-27 (+969d) | 2018-04-03 → 2020-11-27 (+969d) | 1d → 0d | none → 298d | none → 1FS+29mo | constraint none → start no earlier than 2020-11-27 |
| 76 | **Simulation, testing, validation and quality** | 2018-04-03 → 2020-06-15 (+804d) | 2018-04-03 → 2022-01-21 (+1389d) | 1d → 420d |  |  |  |
| 78 | **Technology Demonstrator Prototype Manufacturing** | 2018-04-03 → 2020-06-15 (+804d) | 2018-04-03 → 2021-04-16 (+1109d) | 1d → 220d | none → 170d |  | was named Technology demonstrator prototype manufacturing |
| 82 | Payload Validation | 2018-04-03 → 2021-05-31 (+1154d) | 2018-04-03 → 2021-07-09 (+1193d) | 1d → 30d | none → 140d | none → 79, 85FF |  |
| 83 | Modular System Validation | 2018-04-03 → 2021-05-31 (+1154d) | 2018-04-03 → 2021-07-09 (+1193d) | 1d → 30d | none → 140d | none → 80, 85FF |  |
| 84 | Interaction Platform Validation | 2018-04-03 → 2021-05-31 (+1154d) | 2018-04-03 → 2021-07-09 (+1193d) | 1d → 30d | none → 140d | none → 81, 85FF | was named Interaction platform validation |
| 86 | Full System Prototype Validation | 2018-04-03 → 2021-07-26 (+1210d) | 2018-04-03 → 2021-10-29 (+1305d) | 1d → 70d | none → 60d | none → 85, 87FF | was named Full system prototype validation |
| 88 | Quality of the product | 2018-04-03 → 2021-11-15 (+1322d) | 2018-04-03 → 2022-01-21 (+1389d) | 1d → 50d | none → 0d | none → 87, 89FF |  |
| 90 | **Business planning and exploitation of results** | 2018-04-03 → 2018-09-10 (+160d) | 2018-04-03 → 2018-10-05 (+185d) | 1d → 20d | 0d → 860d |  |  |
| 92 | **Market Approach** | 2018-04-03 → 2018-09-10 (+160d) | 2018-04-03 → 2018-09-25 (+175d) | 1d → 12d | none → 860d |  |  |
| 96 | Exploitation and Business Plans | 2018-04-03 → 2018-09-26 (+176d) | 2018-04-03 → 2018-10-05 (+185d) | 1d → 8d | none → 860d | none → 92, 91FF | was named Exploitation and business plans |
| 97 | **Communication and dissemination strategies** | 2018-04-03 → 2018-09-10 (+160d) | 2018-04-03 → 2022-01-21 (+1389d) | 1d → 880d |  |  |  |
| 99 | Dissemination and Communication plan | 2018-04-03 → 2018-09-10 (+160d) | 2018-04-03 → 2018-10-05 (+185d) | 1d → 1mo | none → 860d | none → 1, 98FF |  |
| 100 | **On-line Dissemination/Communication Activities** | 2018-04-03 → 2018-10-08 (+188d) | 2018-04-03 → 2022-01-21 (+1389d) | 1d → 860d | none → 0d |  | was named On-line dissemination activities |
| 103 | **Off-line Dissemination/Communication Activities** | 2018-04-03 → 2018-12-31 (+272d) | 2018-04-03 → 2022-01-21 (+1389d) | 1d → 800d | none → 0d |  | was named Off-line dissemination activities |
| 106 | **Production of Dissemination Materials** | 2018-04-03 → 2020-02-24 (+692d) | 2018-04-03 → 2022-01-21 (+1389d) | 1d → 500d | none → 0d |  | was named Dissemination materials |

## Version 3 (saved 2018-04-07)

Note of the change: FINAL GANTT PRELATIONS

Last finish stays 2022-01-21.

Changed:

| ID | Task | Start | Finish | Duration | Total float | Predecessors | Other |
| --- | --- | --- | --- | --- | --- | --- | --- |
| 3 | Project management plan |  |  |  |  | 1FS+1mo → 1FS+1mo, 4FF, 21FF | constraint none → finish no later than 2018-10-05 |
| 4 | Development of the project management plan |  | 2018-10-22 → 2018-10-05 (-17d) | 31d → 20d | 849d → 0d | 1, 3FF → 1SS |  |
| 6 | Meetings |  |  |  |  | 1, 89FF → 1SS |  |
| 7 | Task tracking and scheduling |  |  |  |  | 1, 89FF → 1SS |  |
| 8 | Annual Reporting |  |  |  |  | 1, 89FF → 1SS |  |
| 9 | Project Implementation of risk management |  |  |  |  | 1, 89FF → 1SS |  |
| 13 | Human resources management |  |  |  |  | 12, 89FF → 12 |  |
| 14 | **Financial Plan** |  | 2018-10-19 → 2018-10-05 (-14d) | 30d → 20d | 850d → 0d |  |  |
| 15 | **Costs** |  | 2018-09-21 → 2018-09-13 (-8d) | 10d → 4d | 850d → 0d |  |  |
| 16 | Fix |  | 2018-09-14 → 2018-09-11 (-3d) | 5d → 2d | 850d → 0d | 1 → 1SS |  |
| 17 | Variable | 2018-09-17 → 2018-09-12 (-5d) | 2018-09-21 → 2018-09-13 (-8d) | 5d → 2d | 850d → 0d |  |  |
| 18 | Funding | 2018-09-24 → 2018-09-14 (-10d) | 2018-09-28 → 2018-09-18 (-10d) | 5d → 3d | 850d → 0d |  |  |
| 19 | Economic feasibility | 2018-10-01 → 2018-09-19 (-12d) | 2018-10-05 → 2018-09-25 (-10d) |  | 850d → 0d |  |  |
| 20 | Evolution monitoring | 2018-10-08 → 2018-09-26 (-12d) | 2018-10-12 → 2018-10-02 (-10d) |  | 850d → 0d |  |  |
| 21 | Additional and follow-up funding seek | 2018-10-15 → 2018-10-03 (-12d) | 2018-10-19 → 2018-10-05 (-14d) | 5d → 3d | 850d → 0d | 3FF, 20 → 20 |  |
| 23 | Guidelines preparation |  |  |  |  | 89FF → 1SS |  |
| 24 | Document revision |  |  |  |  | 89FF → 1SS |  |
| 25 | Document rectification |  |  |  |  | 89FF → 1SS |  |
| 26 | Document approval |  |  |  |  | 89FF → 1SS |  |
| 27 | Periodic Monitoring |  |  |  |  | 1, 89FF → 1SS |  |
| 29 | State of the Art report |  |  |  | 800d → 0d | 1FS+4mo → 1FS+4mo, 32FF, 35FF, 41FF | constraint none → finish no later than 2018-12-28 |
| 31 | Search for current space applications |  | 2018-11-30 → 2018-11-23 (-7d) | 40d → 35d | 800d → 0d |  |  |
| 32 | Requirements definition | 2018-12-03 → 2018-11-26 (-7d) |  | 20d → 25d | 800d → 0d | 29FF, 31 → 31 |  |
| 35 | Requirements definition |  |  |  | 800d → 0d | 29FF, 34 → 34 |  |
| 41 | Requirements definition |  |  |  | 800d → 0d | 29FF, 37 → 37 |  |
| 45 | Payload preliminary report |  |  |  | 680d → 0d | 1FS+10mo → 1FS+10mo, 47FF | constraint none → finish no later than 2019-06-14 |
| 47 | Development |  |  |  | 680d → 0d | 46, 45FF → 46 |  |
| 49 | Modular system preliminary design |  |  |  | 620d → 0d | 1FS+13mo → 1FS+13mo, 53FF, 50FF | constraint none → finish no later than 2019-09-06 |
| 51 | Development of systems interaction and applications |  | 2019-07-19 → 2019-07-26 (+7d) | 25d → 30d | 630d → 0d |  |  |
| 52 | Development of sensors data fusion software | 2019-07-22 → 2019-07-29 (+7d) | 2019-08-16 → 2019-08-23 (+7d) |  | 630d → 0d |  |  |
| 53 | Definition of SATCOM applications domains | 2019-09-02 → 2019-08-26 (-7d) |  | 5d → 10d | 620d → 0d | 52, 49FF → 52 |  |
| 55 | Interaction platform preliminary design |  |  |  | 560d → 0d | 1FS+16mo → 1FS+16mo, 58FF | constraint none → finish no later than 2019-11-29 |
| 58 | Pre-design a full services stakeholders platform |  |  |  | 560d → 0d | 55FF, 56, 57 → 56, 57 |  |
| 60 | Mid-term project report |  |  |  | 440d → 0d |  | constraint none → finish no later than 2020-05-15 |
| 62 | Payload final design |  |  |  | 420d → 0d | 1FS+23mo → 1FS+23mo, 64FF | constraint none → finish no later than 2020-06-12 |
| 64 | Sensors final technical specifications |  |  |  | 420d → 0d | 63, 62FF → 63 |  |
| 66 | Modular system final design - milestone |  |  |  | 360d → 0d | 1FS+26mo → 1FS+26mo, 69FF | constraint none → finish no later than 2020-09-04 |
| 69 | Modular system's final technical specifications |  |  |  | 360d → 0d | 67, 68, 66FF → 67, 68 |  |
| 71 | Interaction platform final design |  |  |  | 298d → 0d | 1FS+29mo → 1FS+29mo, 75FF, 73FF | constraint start no earlier than 2020-11-27 → finish no later than 2020-11-27 |
| 74 | Full services stakeholders platform implementation |  | 2020-10-02 → 2020-10-23 (+21d) | 120d → 135d | 320d → 1d |  |  |
| 75 | Final technical specifications | 2020-11-02 → 2020-10-26 (-7d) | 2020-11-27 → 2020-11-26 (-1d) | 20d → 24d | 300d → 1d | 74, 71FF → 74 |  |
| 77 | Prototype manufacturing |  |  |  | 200d → 0d | 1FS+34mo → 1FS+34mo, 79FF, 80FF, 81FF | constraint none → finish no later than 2021-04-16 |
| 82 | Payload Validation | 2021-05-31 → 2020-11-02 (-210d) | 2021-07-09 → 2020-12-11 (-210d) |  | 140d → 220d | 79, 85FF → 79 |  |
| 83 | Modular System Validation | 2021-05-31 → 2021-01-25 (-126d) | 2021-07-09 → 2021-03-05 (-126d) |  | 140d → 160d | 80, 85FF → 80 |  |
| 84 | Interaction Platform Validation | 2021-05-31 → 2021-04-19 (-42d) | 2021-07-09 → 2021-05-28 (-42d) |  | 140d → 30d | 81, 85FF → 81 |  |
| 85 | Individual systems testing |  |  |  | 138d → 0d | 1FS+37mo → 1FS+37mo, 82FF, 83FF, 84FF | constraint none → finish no later than 2021-07-09 |
| 86 | Full System Prototype Validation | 2021-07-26 → 2021-07-12 (-14d) | 2021-10-29 → 2021-10-15 (-14d) |  | 60d → 10d | 85, 87FF → 85 |  |
| 87 | Full system testing |  |  |  | 60d → 0d | 1FS+41mo → 1FS+41mo, 86FF | constraint none → finish no later than 2021-10-29 |
| 88 | Quality of the product | 2021-11-15 → 2021-11-01 (-14d) | 2022-01-21 → 2022-01-07 (-14d) |  | 0d → 10d | 87, 89FF → 87 |  |
| 89 | Final report |  |  |  |  | 1FS+44mo → 1FS+44mo, 6FF, 7FF, 8FF, 9FF, 13FF, 23FF, 24FF, 25FF, 26FF, 27FF, 88FF, 102FF, 104FF, 105FF, 107FF, 108FF | constraint none → finish no later than 2022-01-21 |
| 91 | Bussines plan |  |  |  | 860d → 0d | 1FS+1mo → 1FS+1mo, 96FF | constraint none → finish no later than 2018-10-05 |
| 92 | **Market Approach** |  | 2018-09-25 → 2018-09-21 (-4d) | 12d → 10d | 860d → 2d |  |  |
| 95 | Resources purchase |  | 2018-09-25 → 2018-09-21 (-4d) | 12d → 10d | 860d → 2d |  |  |
| 96 | Exploitation and Business Plans | 2018-09-26 → 2018-09-24 (-2d) | 2018-10-05 → 2018-10-03 (-2d) |  | 860d → 2d | 92, 91FF → 92 |  |
| 98 | Communication plan |  |  |  |  | 1FS+1mo → 1FS+1mo, 99FF | constraint none → finish no later than 2018-10-05 |
| 99 | Dissemination and Communication plan |  |  |  | 860d → 0d | 1, 98FF → 1 |  |
| 102 | Social media management |  |  |  |  | 101, 89FF → 101 |  |
| 103 | **Off-line Dissemination/Communication Activities** | 2018-12-31 → 2018-10-08 (-84d) | 2022-01-21 → 2022-01-07 (-14d) | 800d → 850d | 0d → 10d |  |  |
| 104 | Conferences | 2018-12-31 → 2018-10-08 (-84d) | 2022-01-21 → 2021-10-29 (-84d) |  | 0d → 60d | 3, 89FF → 3 |  |
| 105 | Meetings | 2018-12-31 → 2018-10-08 (-84d) | 2022-01-21 → 2022-01-07 (-14d) | 800d → 850d | 0d → 10d | 3, 89FF → 3 |  |
| 106 | **Production of Dissemination Materials** | 2020-02-24 → 2018-10-08 (-504d) | 2022-01-21 → 2022-01-07 (-14d) | 500d → 850d | 0d → 10d |  |  |
| 107 | Technology demonstrators | 2020-11-30 → 2018-10-08 (-784d) | 2022-01-21 → 2022-01-07 (-14d) | 300d → 850d | 0d → 10d | 89FF, 3 → 3 |  |
| 108 | Audio visual material production | 2020-02-24 → 2018-10-08 (-504d) | 2022-01-21 → 2020-09-04 (-504d) |  | 0d → 360d | 3, 89FF → 3 |  |

## Version 4 (saved 2018-04-07)

Note of the change: maria

Last finish stays 2022-01-21.

Changed:

| ID | Task | Predecessors |
| --- | --- | --- |
| 2 | **Project Management** | 1 → none |
| 22 | **Documentation Management** | 1 → none |

## Version 5 (saved 2018-04-12)

Note of the change: GANT CERRADO

Last finish stays 2022-01-21.

Changed:

| ID | Task | Start | Finish | Duration | Total float |
| --- | --- | --- | --- | --- | --- |
| 30 | **Payloads** |  | 2018-12-28 → 2018-12-21 (-7d) | 60d → 55d | 0d → 5d |
| 31 | Search for current space applications |  | 2018-11-23 → 2018-11-16 (-7d) | 35d → 30d | 0d → 5d |
| 32 | Requirements definition | 2018-11-26 → 2018-11-19 (-7d) | 2018-12-28 → 2018-12-21 (-7d) |  | 0d → 5d |
| 33 | **Modular System** |  | 2018-12-28 → 2018-12-21 (-7d) | 60d → 55d | 0d → 5d |
| 34 | Search for current modular systems with space applications |  | 2018-11-16 → 2018-11-09 (-7d) | 30d → 25d | 0d → 5d |
| 35 | Requirements definition | 2018-11-19 → 2018-11-12 (-7d) | 2018-12-28 → 2018-12-21 (-7d) |  | 0d → 5d |
| 75 | Final technical specifications |  | 2020-11-26 → 2020-11-27 (+1d) | 24d → 25d | 1d → 0d |
| 79 | Manufacturing of payload sensors |  | 2020-10-30 → 2021-03-19 (+140d) | 100d → 200d | 120d → 20d |
| 80 | Manufacturing of modular system |  | 2021-01-22 → 2021-04-02 (+70d) | 100d → 150d | 60d → 10d |
| 82 | Payload Validation | 2020-11-02 → 2021-03-22 (+140d) | 2020-12-11 → 2021-06-11 (+182d) | 30d → 60d | 220d → 20d |
| 83 | Modular System Validation | 2021-01-25 → 2021-04-05 (+70d) | 2021-03-05 → 2021-06-25 (+112d) | 30d → 60d | 160d → 10d |
| 84 | Interaction Platform Validation |  | 2021-05-28 → 2021-06-18 (+21d) | 30d → 45d | 30d → 15d |
| 86 | Full System Prototype Validation |  | 2021-10-15 → 2021-10-29 (+14d) | 70d → 80d | 10d → 0d |
| 88 | Quality of the product |  | 2022-01-07 → 2022-01-21 (+14d) | 50d → 60d | 10d → 0d |
| 103 | **Off-line Dissemination/Communication Activities** |  | 2022-01-07 → 2022-01-21 (+14d) | 850d → 860d | 10d → 0d |
| 104 | Conferences |  | 2021-10-29 → 2022-01-21 (+84d) | 800d → 860d | 60d → 0d |
| 105 | Meetings |  | 2022-01-07 → 2022-01-21 (+14d) | 850d → 860d | 10d → 0d |
| 106 | **Production of Dissemination Materials** |  | 2022-01-07 → 2022-01-21 (+14d) | 850d → 860d | 10d → 0d |
| 107 | Technology demonstrators |  | 2022-01-07 → 2022-01-21 (+14d) | 850d → 860d | 10d → 0d |
| 108 | Audio visual material production |  | 2020-09-04 → 2022-01-21 (+504d) | 500d → 860d | 360d → 0d |

## Version 6 (saved 2018-04-12)

Note of the change: maria

Last finish stays 2022-01-21.

Changed:

| ID | Task | Other |
| --- | --- | --- |
| 29 | State of the Art completion | was named State of the Art report |
| 89 | Project completion | was named Final report |

## Version 7 (saved 2018-04-29)

Note of the change: FINAL D2 :tada:

Last finish stays 2022-01-21.

Removed: 60 Mid-term project report
